# CCO_OY4_eCoachingLog_Schedule

How a schedule from MS Project changed from version to version. A marks actual dates.

## Version 1 (saved 2016-05-11)

Note of the change: OY4 Process Doc

| ID | WBS | Task | Duration | Start | Finish | Total float | Constraint |
| --- | --- | --- | --- | --- | --- | --- | --- |
| 1 | 0 | **eCoaching Log - OY4** | 296.7d? | 2016-04-12 A | 2017-06-12 | 0d |  |
| 2 | 1.1 | **APL Maintenance Lifecycle** | 296.7d? | 2016-04-12 A | 2017-06-12 | 0d |  |
| 3 | 1.1.1 | **Maintenance Phase Iteration** | 296.7d? | 2016-04-12 A | 2017-06-12 | 0d |  |
| 4 | 1.1.1.1 | **Plan and Manage Iteration** | 288.7d | 2016-04-12 A | 2017-05-31 | 8d |  |
| 5 |  | Plan Project | 14d | 2016-05-02 | 2016-06-01 |  | start no earlier than 2016-05-02 |
| 6 |  | Plan Iteration | 35.7d | 2016-04-12 | 2016-06-01 | 261d | finish no earlier than 2016-06-01 |
| 7 |  | Plan for Security Management | 172h | 2016-05-02 | 2016-06-01 | 261d | finish no earlier than 2016-06-01 |
| 8 |  | Plan Configuration Management | 19.8d | 2016-05-02 | 2016-06-01 | 261d | finish no earlier than 2016-06-01 |
| 9 |  | Process Residual Risk Letter | 22d | 2016-05-02 A | 2016-06-01 | 261d | finish no earlier than 2016-06-01 |
| 10 |  | Manage Iterations | 254d | 2016-06-01 | 2017-05-31 |  | start no earlier than 2016-06-01 |
| 11 |  | Understand and Communicate Project Performance | 254d | 2016-06-01 | 2017-05-31 |  | start no earlier than 2016-06-01 |
| 12 |  | Decision Analysis and Resolution | 254d | 2016-06-01 | 2017-05-31 |  | start no earlier than 2016-06-01 |
| 13 |  | Assess Results | 254d | 2016-06-01 | 2017-05-31 |  | start no earlier than 2016-06-01 |
| 14 | 1.1.1.2 | **Maintenance Iteration 1** | 65d | 2016-06-01 | 2016-08-31 | 0d |  |
| 15 | 1.1.1.2.1 | **Identify and Refine Requirements** | 65d | 2016-06-01 | 2016-08-31 | 0d |  |
| 16 |  | Identify and Outline Requirements | 31d | 2016-06-01 | 2016-08-31 |  | start no earlier than 2016-06-01 |
| 17 |  | Detail System-Wide Requirements | 31d | 2016-06-01 | 2016-08-31 |  | start no earlier than 2016-06-01 |
| 18 |  | Create, Review/Update Security Requirements | 65d | 2016-06-01 | 2016-08-31 |  | start no earlier than 2016-06-01 |
| 19 |  | Create Test Cases | 31d | 2016-06-01 | 2016-08-31 |  | start no earlier than 2016-06-01 |
| 20 |  | Review Test Activities for Security | 65d | 2016-06-01 | 2016-08-31 |  | start no earlier than 2016-06-01 |
| 21 | 1.1.1.2.2 | **Develop Solution Increment** | 65d | 2016-06-01 | 2016-08-31 | 0d |  |
| 22 |  | Design the Solution | 31d | 2016-06-01 | 2016-08-31 |  | start no earlier than 2016-06-01 |
| 23 |  | Decision Analysis and Resolution | 65d | 2016-06-01 | 2016-08-31 |  | start no earlier than 2016-06-01 |
| 24 |  | Create, Review/Update Security Requirements | 65d | 2016-06-01 | 2016-08-31 |  | start no earlier than 2016-06-01 |
| 25 |  | Create Developer Tests | 31d | 2016-06-01 | 2016-08-31 |  | start no earlier than 2016-06-01 |
| 26 |  | Develop Solution | 31d | 2016-06-01 | 2016-08-31 |  | start no earlier than 2016-06-01 |
| 27 |  | Run Developer Tests | 31d | 2016-06-01 | 2016-08-31 |  | start no earlier than 2016-06-01 |
| 28 |  | Integrate and Create Build | 65d | 2016-06-01 | 2016-08-31 |  | start no earlier than 2016-06-01 |
| 29 |  | Evaluate Code for Security | 65d | 2016-06-01 | 2016-08-31 |  | start no earlier than 2016-06-01 |
| 30 |  | Evaluate Security Testing | 65d | 2016-06-01 | 2016-08-31 |  | start no earlier than 2016-06-01 |
| 31 |  | Verify Operations Security | 65d | 2016-06-01 | 2016-08-31 |  | start no earlier than 2016-06-01 |
| 32 | 1.1.1.2.3 | **Test Solution** | 65d | 2016-06-01 | 2016-08-31 | 0d |  |
| 33 |  | Implement Tests (optional) | 31d | 2016-06-01 | 2016-08-31 |  | start no earlier than 2016-06-01 |
| 34 |  | Run Tests | 31d | 2016-06-01 | 2016-08-31 |  | start no earlier than 2016-06-01 |
| 35 |  | Evaluate Security Testing | 31d | 2016-06-01 | 2016-08-31 |  | start no earlier than 2016-06-01 |
| 36 |  | Peer Review Selected Work Products | 31d | 2016-06-01 | 2016-08-31 |  | start no earlier than 2016-06-01 |
| 37 |  | Customer Acceptance Testing | 31d | 2016-06-01 | 2016-08-31 |  | start no earlier than 2016-06-01 |
| 38 | 1.1.1.2.3.6 | **Formal Peer Review (Optional)** | 65d | 2016-06-01 | 2016-08-31 | 0d |  |
| 39 |  | Plan for Formal Peer Reviews (optional) | 21d | 2016-06-01 | 2016-08-31 |  | start no earlier than 2016-06-01 |
| 40 |  | Conduct Formal Peer Reviews (optional) | 21d | 2016-06-01 | 2016-08-31 |  | start no earlier than 2016-06-01 |
| 41 |  | Follow-up on Formal Peer Review Results (optional) | 21d | 2016-06-01 | 2016-08-31 |  | start no earlier than 2016-06-01 |
| 42 | 1.1.1.3 | **Maintenance Iteration 2** | 62d | 2016-09-01 | 2016-11-30 | 0d |  |
| 43 | 1.1.1.3.1 | **Identify and Refine Requirements** | 62d | 2016-09-01 | 2016-11-30 | 0d |  |
| 44 |  | Identify and Outline Requirements | 0d | 2016-09-01 | 2016-11-30 |  | start no earlier than 2016-09-01 |
| 45 |  | Detail System-Wide Requirements | 0d | 2016-09-01 | 2016-11-30 |  | start no earlier than 2016-09-01 |
| 46 |  | Create, Review/Update Security Requirements | 62d | 2016-09-01 | 2016-11-30 |  | start no earlier than 2016-09-01 |
| 47 |  | Create Test Cases | 0d | 2016-09-01 | 2016-11-30 |  | start no earlier than 2016-09-01 |
| 48 |  | Review Test Activities for Security | 62d | 2016-09-01 | 2016-11-30 |  | start no earlier than 2016-09-01 |
| 49 | 1.1.1.3.2 | **Develop Solution Increment** | 62d | 2016-09-01 | 2016-11-30 | 0d |  |
| 50 |  | Design the Solution | 0d | 2016-09-01 | 2016-11-30 |  | start no earlier than 2016-09-01 |
| 51 |  | Decision Analysis and Resolution | 62d | 2016-09-01 | 2016-11-30 |  | start no earlier than 2016-09-01 |
| 52 |  | Create, Review/Update Security Requirements | 62d | 2016-09-01 | 2016-11-30 |  | start no earlier than 2016-09-01 |
| 53 |  | Create Developer Tests | 0d | 2016-09-01 | 2016-11-30 |  | start no earlier than 2016-09-01 |
| 54 |  | Develop Solution | 0d | 2016-09-01 | 2016-11-30 |  | start no earlier than 2016-09-01 |
| 55 |  | Run Developer Tests | 0d | 2016-09-01 | 2016-11-30 |  | start no earlier than 2016-09-01 |
| 56 |  | Integrate and Create Build | 62d | 2016-09-01 | 2016-11-30 |  | start no earlier than 2016-09-01 |
| 57 |  | Evaluate Code for Security | 62d | 2016-09-01 | 2016-11-30 |  | start no earlier than 2016-09-01 |
| 58 |  | Evaluate Security Testing | 62d | 2016-09-01 | 2016-11-30 |  | start no earlier than 2016-09-01 |
| 59 |  | Verify Operations Security | 62d | 2016-09-01 | 2016-11-30 |  | start no earlier than 2016-09-01 |
| 60 | 1.1.1.3.3 | **Test Solution** | 62d | 2016-09-01 | 2016-11-30 | 0d |  |
| 61 |  | Implement Tests (optional) | 0d | 2016-09-01 | 2016-11-30 |  | start no earlier than 2016-09-01 |
| 62 |  | Run Tests | 0d | 2016-09-01 | 2016-11-30 |  | start no earlier than 2016-09-01 |
| 63 |  | Evaluate Security Testing | 0d | 2016-09-01 | 2016-11-30 |  | start no earlier than 2016-09-01 |
| 64 |  | Peer Review Selected Work Products | 0d | 2016-09-01 | 2016-11-30 |  | start no earlier than 2016-09-01 |
| 65 |  | Customer Acceptance Testing | 0d | 2016-09-01 | 2016-11-30 |  | start no earlier than 2016-09-01 |
| 66 | 1.1.1.3.3.6 | **Formal Peer Review (Optional)** | 62d | 2016-09-01 | 2016-11-30 | 0d |  |
| 67 |  | Plan for Formal Peer Reviews (optional) | 0d | 2016-09-01 | 2016-11-30 |  | start no earlier than 2016-09-01 |
| 68 |  | Conduct Formal Peer Reviews (optional) | 0d | 2016-09-01 | 2016-11-30 |  | start no earlier than 2016-09-01 |
| 69 |  | Follow-up on Formal Peer Review Results (optional) | 0d | 2016-09-01 | 2016-11-30 |  | start no earlier than 2016-09-01 |
| 70 | 1.1.1.4 | **Maintenance Iteration 3** | 62d | 2016-12-01 | 2017-02-28 | 0d |  |

| ID | WBS | Task | Duration | Start | Finish | Predecessors | Total float | Constraint |
| --- | --- | --- | --- | --- | --- | --- | --- | --- |
| 71 | 1.1.1.4.1 | **Identify and Refine Requirements** | 62d | 2016-12-01 | 2017-02-28 |  | 0d |  |
| 72 |  | Identify and Outline Requirements | 0d | 2016-12-01 | 2017-02-28 |  |  | start no earlier than 2016-12-01 |
| 73 |  | Detail System-Wide Requirements | 0d | 2016-12-01 | 2017-02-28 |  |  | start no earlier than 2016-12-01 |
| 74 |  | Create, Review/Update Security Requirements | 62d | 2016-12-01 | 2017-02-28 |  |  | start no earlier than 2016-12-01 |
| 75 |  | Create Test Cases | 0d | 2016-12-01 | 2017-02-28 |  |  | start no earlier than 2016-12-01 |
| 76 |  | Review Test Activities for Security | 62d | 2016-12-01 | 2017-02-28 |  |  | start no earlier than 2016-12-01 |
| 77 | 1.1.1.4.2 | **Develop Solution Increment** | 62d | 2016-12-01 | 2017-02-28 |  | 0d |  |
| 78 |  | Design the Solution | 0d | 2016-12-01 | 2017-02-28 |  |  | start no earlier than 2016-12-01 |
| 79 |  | Decision Analysis and Resolution | 62d | 2016-12-01 | 2017-02-28 |  |  | start no earlier than 2016-12-01 |
| 80 |  | Create, Review/Update Security Requirements | 62d | 2016-12-01 | 2017-02-28 |  |  | start no earlier than 2016-12-01 |
| 81 |  | Create Developer Tests | 0d | 2016-12-01 | 2017-02-28 |  |  | start no earlier than 2016-12-01 |
| 82 |  | Develop Solution | 0d | 2016-12-01 | 2017-02-28 |  |  | start no earlier than 2016-12-01 |
| 83 |  | Run Developer Tests | 0d | 2016-12-01 | 2017-02-28 |  |  | start no earlier than 2016-12-01 |
| 84 |  | Integrate and Create Build | 62d | 2016-12-01 | 2017-02-28 |  |  | start no earlier than 2016-12-01 |
| 85 |  | Evaluate Code for Security | 62d | 2016-12-01 | 2017-02-28 |  |  | start no earlier than 2016-12-01 |
| 86 |  | Evaluate Security Testing | 62d | 2016-12-01 | 2017-02-28 |  |  | start no earlier than 2016-12-01 |
| 87 |  | Verify Operations Security | 62d | 2016-12-01 | 2017-02-28 |  |  | start no earlier than 2016-12-01 |
| 88 | 1.1.1.4.3 | **Test Solution** | 62d | 2016-12-01 | 2017-02-28 |  | 0d |  |
| 89 |  | Implement Tests (optional) | 0d | 2016-12-01 | 2017-02-28 |  |  | start no earlier than 2016-12-01 |
| 90 |  | Run Tests | 0d | 2016-12-01 | 2017-02-28 |  |  | start no earlier than 2016-12-01 |
| 91 |  | Evaluate Security Testing | 0d | 2016-12-01 | 2017-02-28 |  |  | start no earlier than 2016-12-01 |
| 92 |  | Peer Review Selected Work Products | 0d | 2016-12-01 | 2017-02-28 |  |  | start no earlier than 2016-12-01 |
| 93 |  | Customer Acceptance Testing | 0d | 2016-12-01 | 2017-02-28 |  |  | start no earlier than 2016-12-01 |
| 94 | 1.1.1.4.3.6 | **Formal Peer Review (Optional)** | 62d | 2016-12-01 | 2017-02-28 |  | 0d |  |
| 95 |  | Plan for Formal Peer Reviews (optional) | 0d | 2016-12-01 | 2017-02-28 |  |  | start no earlier than 2016-12-01 |
| 96 |  | Conduct Formal Peer Reviews (optional) | 0d | 2016-12-01 | 2017-02-28 |  |  | start no earlier than 2016-12-01 |
| 97 |  | Follow-up on Formal Peer Review Results (optional) | 0d | 2016-12-01 | 2017-02-28 |  |  | start no earlier than 2016-12-01 |
| 98 | 1.1.1.5 | **Maintenance Iteration 4** | 65d | 2017-03-01 | 2017-05-31 |  | 0d |  |
| 99 | 1.1.1.5.1 | **Identify and Refine Requirements** | 65d | 2017-03-01 | 2017-05-31 |  | 0d |  |
| 100 |  | Identify and Outline Requirements | 0d | 2017-03-01 | 2017-05-31 |  |  | start no earlier than 2017-03-01 |
| 101 |  | Detail System-Wide Requirements | 0d | 2017-03-01 | 2017-05-31 |  |  | start no earlier than 2017-03-01 |
| 102 |  | Create, Review/Update Security Requirements | 65d | 2017-03-01 | 2017-05-31 |  |  | start no earlier than 2017-03-01 |
| 103 |  | Create Test Cases | 0d | 2017-03-01 | 2017-05-31 |  |  | start no earlier than 2017-03-01 |
| 104 |  | Review Test Activities for Security | 65d | 2017-03-01 | 2017-05-31 |  |  | start no earlier than 2017-03-01 |
| 105 | 1.1.1.5.2 | **Develop Solution Increment** | 65d | 2017-03-01 | 2017-05-31 |  | 0d |  |
| 106 |  | Design the Solution | 0d | 2017-03-01 | 2017-05-31 |  |  | start no earlier than 2017-03-01 |
| 107 |  | Decision Analysis and Resolution | 65d | 2017-03-01 | 2017-05-31 |  |  | start no earlier than 2017-03-01 |
| 108 |  | Create, Review/Update Security Requirements | 65d | 2017-03-01 | 2017-05-31 |  |  | start no earlier than 2017-03-01 |
| 109 |  | Create Developer Tests | 0d | 2017-03-01 | 2017-05-31 |  |  | start no earlier than 2017-03-01 |
| 110 |  | Develop Solution | 0d | 2017-03-01 | 2017-05-31 |  |  | start no earlier than 2017-03-01 |
| 111 |  | Run Developer Tests | 0d | 2017-03-01 | 2017-05-31 |  |  | start no earlier than 2017-03-01 |
| 112 |  | Integrate and Create Build | 65d | 2017-03-01 | 2017-05-31 |  |  | start no earlier than 2017-03-01 |
| 113 |  | Evaluate Code for Security | 65d | 2017-03-01 | 2017-05-31 |  |  | start no earlier than 2017-03-01 |
| 114 |  | Evaluate Security Testing | 65d | 2017-03-01 | 2017-05-31 |  |  | start no earlier than 2017-03-01 |
| 115 |  | Verify Operations Security | 65d | 2017-03-01 | 2017-05-31 |  |  | start no earlier than 2017-03-01 |
| 116 | 1.1.1.5.3 | **Test Solution** | 65d | 2017-03-01 | 2017-05-31 |  | 0d |  |
| 117 |  | Implement Tests (optional) | 0d | 2017-03-01 | 2017-05-31 |  |  | start no earlier than 2017-03-01 |
| 118 |  | Run Tests | 0d | 2017-03-01 | 2017-05-31 |  |  | start no earlier than 2017-03-01 |
| 119 |  | Evaluate Security Testing | 0d | 2017-03-01 | 2017-05-31 |  |  | start no earlier than 2017-03-01 |
| 120 |  | Peer Review Selected Work Products | 0d | 2017-03-01 | 2017-05-31 |  |  | start no earlier than 2017-03-01 |
| 121 |  | Customer Acceptance Testing | 0d | 2017-03-01 | 2017-05-31 |  |  | start no earlier than 2017-03-01 |
| 122 | 1.1.1.5.3.6 | **Formal Peer Review (Optional)** | 65d | 2017-03-01 | 2017-05-31 |  | 0d |  |
| 123 |  | Plan for Formal Peer Reviews (optional) | 0d | 2017-03-01 | 2017-05-31 |  |  | start no earlier than 2017-03-01 |
| 124 |  | Conduct Formal Peer Reviews (optional) | 0d | 2017-03-01 | 2017-05-31 |  |  | start no earlier than 2017-03-01 |
| 125 |  | Follow-up on Formal Peer Review Results (optional) | 0d | 2017-03-01 | 2017-05-31 |  |  | start no earlier than 2017-03-01 |
| 126 | 1.1.1.6 | **Assess Results** | 256d? | 2016-06-01 | 2017-06-02 |  | 6d |  |
| 127 |  | Complete measurement spreadsheet | 254d? | 2016-06-01 | 2017-05-31 |  | 6d | finish no earlier than 2017-05-31 |
| 128 |  | Communicate to stakeholders | 2d? | 2017-06-01 | 2017-06-02 | 127 | 6d |  |
| 129 | 1.1.1.7 | **Manage Configurations** | 262d | 2016-06-01 | 2017-06-12 |  |  |  |
| 130 |  | Perform Change Management | 254d | 2016-06-01 | 2017-05-31 |  | 8d | finish no earlier than 2017-05-31 |
| 131 |  | Create and Verify Baseline | 254d | 2016-06-01 | 2017-05-31 |  | 8d | finish no earlier than 2017-05-31 |
| 132 |  | Decision Analysis and Resolution | 254d | 2016-06-01 | 2017-05-31 |  | 8d | finish no earlier than 2017-05-31 |
| 133 | 1.1.1.7.4 | **Monthly patches** | 239.12d | 2016-06-01 | 2017-05-10 |  |  |  |
| 134 |  | June Patching QA / Prod | 176h | 2016-06-01 | 2016-06-30 |  |  |  |
| 135 |  | July Patching QA / Prod | 168h | 2016-07-01 | 2016-07-31 |  |  |  |
| 136 |  | August Patching QA / Prod | 184h | 2016-08-01 | 2016-08-31 |  |  |  |
| 137 |  | Sept Patching QA / Prod | 168h | 2016-09-01 | 2016-09-30 |  |  |  |
| 138 |  | Oct Patching QA / Prod | 176h | 2016-10-01 | 2016-10-31 |  |  |  |
| 139 |  | Nov Patching QA / Prod | 160h | 2016-11-01 | 2016-11-30 |  |  |  |
| 140 |  | Dec Patching QA / Prod | 176h | 2016-12-01 | 2016-12-31 |  |  |  |

| ID | WBS | Task | Duration | Start | Finish |
| --- | --- | --- | --- | --- | --- |
| 141 |  | Jan Patching QA / Prod | 176h | 2017-01-01 | 2017-01-31 |
| 142 |  | Feb Patching QA / Prod | 160h | 2017-02-01 | 2017-02-28 |
| 143 |  | March Patching QA / Prod | 184h | 2017-03-01 | 2017-03-31 |
| 144 |  | April Patching QA / Prod | 176h | 2017-04-01 | 2017-04-30 |
| 145 |  | May Patching QA / Prod | 176h | 2017-05-01 | 2017-05-31 |
| 146 | 1.1.1.7.5 | **Monthly Password Changes** | 239.12d | 2016-06-01 | 2017-05-10 |
| 147 |  | June QA / Prod PW | 176h | 2016-06-01 | 2016-06-30 |
| 148 |  | July QA / Prod PW | 168h | 2016-07-01 | 2016-07-31 |
| 149 |  | Aug QA / Prod PW | 184h | 2016-08-01 | 2016-08-31 |
| 150 |  | Sept QA / Prod PW | 168h | 2016-09-01 | 2016-09-30 |
| 151 |  | Oct QA / Prod PW | 176h | 2016-10-01 | 2016-10-31 |
| 152 |  | Nov QA / Prod PW | 160h | 2016-11-01 | 2016-11-30 |
| 153 |  | Dec QA / Prod PW | 176h | 2016-12-01 | 2016-12-31 |
| 154 |  | Jan QA / Prod PW | 176h | 2017-01-01 | 2017-01-31 |
| 155 |  | Feb QA / Prod PW | 160h | 2017-02-01 | 2017-02-28 |
| 156 |  | March QA / Prod PW | 184h | 2017-03-01 | 2017-03-31 |
| 157 |  | April QA / Prod PW | 176h | 2017-04-01 | 2017-04-30 |
| 158 |  | May QA / Prod PW | 176h | 2017-05-01 | 2017-05-31 |

## Version 2 (saved 2016-07-18)

Note of the change: update after review with Karen

Last finish 2017-06-12 → 2024-02-13 (+2437d).

Added:

| ID | Task | Duration | Start | Finish | Predecessors | Constraint | Resources |
| --- | --- | --- | --- | --- | --- | --- | --- |
| 9 | Create Baseline | 4d | 2016-09-06 | 2016-09-09 |  | start no earlier than 2016-09-06 | Miller; Jackie K |
| 14 | **Governance** | 47d | 2016-06-01 | 2016-08-05 |  |  |  |
| 15 | Project Plan Review | 15d | 2016-06-10 | 2016-06-30 |  | finish no earlier than 2016-06-30 | Black; Karen S [6.7%] |
| 16 | APL Process Audit | 10d | 2016-07-25 | 2016-08-05 | 15 | finish no earlier than 2016-08-05 | Black; Karen S [32.5%] |
| 17 | Baseline Audit | 3d | 2016-06-01 | 2016-06-03 |  | start no earlier than 2009-09-14 | Black; Karen S |
| 89 | **Automate Weekly/Monthly Program Reports** | 62d | 2016-12-01 | 2017-02-28 |  |  |  |
| 90 | Requirements | 62d | 2016-12-01 | 2017-02-28 |  | finish no earlier than 2017-02-28 |  |
| 91 | Development | 62d | 2016-12-01 | 2017-02-28 |  | finish no earlier than 2017-02-28 |  |
| 92 | Testing | 62d | 2016-12-01 | 2017-02-28 |  | finish no earlier than 2017-02-28 |  |
| 93 | Implementation | 62d | 2016-12-01 | 2017-02-28 |  | finish no earlier than 2017-02-28 |  |
| 149 | **Monthly Server Scans** | 239.12d | 2016-06-01 | 2017-05-10 |  |  |  |
| 150 | June Server Scans / Review / Remediation | 176h | 2016-06-01 | 2016-06-30 |  |  | Palacherla; Susmitha C |
| 151 | July Server Scans / Review / Remediation | 168h | 2016-07-01 | 2016-07-31 |  |  | Palacherla; Susmitha C |
| 152 | Aug Server Scans / Review / Remediation | 184h | 2016-08-01 | 2016-08-31 |  |  | Palacherla; Susmitha C |
| 153 | Sept Server Scans / Review / Remediation | 168h | 2016-09-01 | 2016-09-30 |  |  | Palacherla; Susmitha C |
| 154 | Oct Server Scans / Review / Remediation | 176h | 2016-10-01 | 2016-10-31 |  |  | Palacherla; Susmitha C |
| 155 | Nov Server Scans / Review / Remediation | 160h | 2016-11-01 | 2016-11-30 |  |  | Palacherla; Susmitha C |
| 156 | Dec Server Scans / Review / Remediation | 176h | 2016-12-01 | 2016-12-31 |  |  | Palacherla; Susmitha C |
| 157 | Jan Server Scans / Review / Remediation | 176h | 2017-01-01 | 2017-01-31 |  |  | Palacherla; Susmitha C |
| 158 | Feb Server Scans / Review / Remediation | 160h | 2017-02-01 | 2017-02-28 |  |  | Palacherla; Susmitha C |
| 159 | March Server Scans / Review / Remediation | 184h | 2017-03-01 | 2017-03-31 |  |  | Palacherla; Susmitha C |
| 160 | April Server Scans / Review / Remediation | 176h | 2017-04-01 | 2017-04-30 |  |  | Palacherla; Susmitha C |
| 161 | May Server Scans / Review / Remediation | 176h | 2017-05-01 | 2017-05-31 |  |  | Palacherla; Susmitha C |

Removed: 9 Process Residual Risk Letter; 38 Formal Peer Review (Optional); 39 Plan for Formal Peer Reviews (optional); 40 Conduct Formal Peer Reviews (optional); 41 Follow-up on Formal Peer Review Results (optional); 66 Formal Peer Review (Optional); 67 Plan for Formal Peer Reviews (optional); 68 Conduct Formal Peer Reviews (optional); 69 Follow-up on Formal Peer Review Results (optional); 89 Implement Tests (optional); 94 Formal Peer Review (Optional); 95 Plan for Formal Peer Reviews (optional); 96 Conduct Formal Peer Reviews (optional); 97 Follow-up on Formal Peer Review Results (optional); 122 Formal Peer Review (Optional); 123 Plan for Formal Peer Reviews (optional); 124 Conduct Formal Peer Reviews (optional); 125 Follow-up on Formal Peer Review Results (optional); 131 Create and Verify Baseline; 132 Decision Analysis and Resolution

Changed:

| ID | Task | Start | Finish | Duration | Total float | Other |
| --- | --- | --- | --- | --- | --- | --- |
| 1 | **eCoaching Log - OY4** | 2016-04-12 A → 2016-06-01 (+50d) | 2017-06-12 → 2024-02-13 (+2437d) | 296.7d? → 1977d? | 0d → none |  |
| 2 | **APL Maintenance Lifecycle** | 2016-04-12 A → 2016-06-01 (+50d) | 2017-06-12 → 2017-07-12 (+30d) | 296.7d? → 283d? | 0d → none |  |
| 3 | **Maintenance Phase Iteration** | 2016-04-12 A → 2016-06-01 (+50d) | 2017-06-12 → 2017-07-12 (+30d) | 296.7d? → 283d? | 0d → none |  |
| 4 | **Plan and Manage Iteration** | 2016-04-12 A → 2016-06-01 (+50d) |  | 288.7d → 254d | 8d → 0d |  |
| 5 | Plan Project | 2016-05-02 → 2016-06-01 (+30d) | 2016-06-01 → 2016-07-22 (+51d) | 14d → 37d |  | constraint start no earlier than 2016-05-02 → start no earlier than 2016-06-01; resources Stearns; Douglas R; Black; Karen S; Tiongson; John Eric Z (NONUS); Huang; Lili; Haltmeyer; Jacqueline K; Ingram Michael T → Stearns; Douglas R; Tiongson; John Eric Z (NONUS); Huang; Lili; Palacherla; Susmitha C; Ingram Michael T |
| 6 | Plan Iteration | 2016-04-12 → 2016-06-01 (+50d) | 2016-06-01 → 2016-07-21 (+50d) |  | 261d → 1941.3d | constraint finish no earlier than 2016-06-01 → start no earlier than 2016-06-01; resources Tiongson; John Eric Z (NONUS); Stearns; Douglas R; Ingram Michael T; Huang; Lili → Tiongson; John Eric Z (NONUS); Stearns; Douglas R; Ingram Michael T; Huang; Lili; Palacherla; Susmitha C |
| 7 | Plan for Security Management | 2016-05-02 → 2016-06-30 (+59d) | 2016-06-01 → 2016-07-22 (+51d) | 172h → 120.8h | 261d → 1940d | constraint finish no earlier than 2016-06-01 → finish no earlier than 2016-07-22; resources Tiongson; John Eric Z (NONUS); Szabo; Brian P → Tiongson; John Eric Z (NONUS); Ingram Michael T; Huang; Lili; Palacherla; Susmitha C; Stearns; Douglas R |
| 8 | Plan Configuration Management | 2016-05-02 → 2016-06-28 (+57d) | 2016-06-01 → 2016-07-22 (+51d) | 19.8d → 17.49d | 261d → 1940d | constraint finish no earlier than 2016-06-01 → finish no earlier than 2016-07-22; resources Miller; Jackie K; Ingram Michael T; Tiongson; John Eric Z (NONUS) → Huang; Lili; Ingram Michael T; Tiongson; John Eric Z (NONUS); Palacherla; Susmitha C; Stearns; Douglas R |
| 10 | Manage Iterations |  |  |  |  | resources Stearns; Douglas R; Tiongson; John Eric Z (NONUS); Ingram Michael T; Huang; Lili → Stearns; Douglas R; Tiongson; John Eric Z (NONUS); Ingram Michael T; Huang; Lili; Palacherla; Susmitha C |
| 11 | Understand and Communicate Project Performance |  |  |  |  | resources Ingram Michael T; Tiongson; John Eric Z (NONUS); Huang; Lili → Ingram Michael T; Tiongson; John Eric Z (NONUS); Huang; Lili; Palacherla; Susmitha C; Stearns; Douglas R |
| 12 | Decision Analysis and Resolution |  |  |  |  | resources Ingram Michael T; Huang; Lili → Ingram Michael T; Huang; Lili; Tiongson; John Eric Z (NONUS); Palacherla; Susmitha C; Stearns; Douglas R |
| 13 | Assess Results |  |  |  |  | resources Stearns; Douglas R; Tiongson; John Eric Z (NONUS); Ingram Michael T; Huang; Lili → Stearns; Douglas R; Tiongson; John Eric Z (NONUS); Ingram Michael T; Huang; Lili; Palacherla; Susmitha C |
| 23 | Create Test Cases |  |  |  |  | resources Stearns; Douglas R; Tiongson; John Eric Z (NONUS); Huang; Lili; Palacherla; Susmitha C → Stearns; Douglas R; Huang; Lili; Palacherla; Susmitha C |
| 29 | Create Developer Tests |  |  |  |  | resources Huang; Lili; Palacherla; Susmitha C; Tiongson; John Eric Z (NONUS); Stearns; Douglas R → Huang; Lili; Palacherla; Susmitha C |
| 30 | Develop Solution |  |  |  |  | resources Huang; Lili; Palacherla; Susmitha C; Tiongson; John Eric Z (NONUS); Stearns; Douglas R → Huang; Lili; Palacherla; Susmitha C |
| 31 | Run Developer Tests |  |  |  |  | resources Huang; Lili; Palacherla; Susmitha C; Tiongson; John Eric Z (NONUS) → Huang; Lili; Palacherla; Susmitha C |
| 32 | Integrate and Create Build |  |  | 65d → 31d |  | resources Miller; Jackie K; Ingram Michael T; Tiongson; John Eric Z (NONUS); Huang; Lili; Palacherla; Susmitha C → Huang; Lili; Palacherla; Susmitha C |
| 33 | Evaluate Code for Security |  |  |  |  | resources Huang; Lili; Palacherla; Susmitha C; Szabo; Brian P; Tiongson; John Eric Z (NONUS); Ingram Michael T → Huang; Lili; Palacherla; Susmitha C; Szabo; Brian P; Information System Security Officer |
| 34 | Evaluate Security Testing |  |  |  |  | resources Huang; Lili; Palacherla; Susmitha C; Szabo; Brian P; Ingram Michael T; Tiongson; John Eric Z (NONUS); Stearns; Douglas R → Huang; Lili; Palacherla; Susmitha C; Szabo; Brian P; Information System Security Officer |
| 35 | Verify Operations Security |  |  |  |  | resources Huang; Lili; Palacherla; Susmitha C; Szabo; Brian P; Ingram Michael T; Tiongson; John Eric Z (NONUS); Stearns; Douglas R → Huang; Lili; Palacherla; Susmitha C; Szabo; Brian P; Information System Security Officer |
| 38 | Run Tests |  |  |  |  | resources Tester; Team Member → Stearns; Douglas R |
| 39 | Evaluate Security Testing |  |  | 31d → 62d |  | resources Project Manager; Stakeholder; Supplier Acquisition Manager; Tester; Huang; Lili; Palacherla; Susmitha C → Stearns; Douglas R; Szabo; Brian P |
| 40 | Peer Review Selected Work Products |  |  | 31d → 65d |  | resources Augustin; Jourdain M → Hinman; David L; Huang; Lili; Palacherla; Susmitha C; Stearns; Douglas R |
| 44 | Identify and Outline Requirements |  |  | 0d → 62d |  |  |
| 45 | Detail System-Wide Requirements |  |  | 0d → 62d |  |  |
| 47 | Create Test Cases |  | 2016-11-30 → 2016-09-01 (-90d) |  |  | resources Stearns; Douglas R; Tiongson; John Eric Z (NONUS); Huang; Lili; Palacherla; Susmitha C → Stearns; Douglas R; Huang; Lili; Palacherla; Susmitha C |
| 50 | Design the Solution |  |  | 0d → 62d |  |  |
| 51 | Decision Analysis and Resolution |  |  | 62d → 34d |  |  |
| 53 | Create Developer Tests |  |  | 0d → 62d |  | resources Huang; Lili; Palacherla; Susmitha C; Tiongson; John Eric Z (NONUS); Stearns; Douglas R → Huang; Lili; Palacherla; Susmitha C |
| 54 | Develop Solution |  |  | 0d → 62d |  | resources Huang; Lili; Palacherla; Susmitha C; Tiongson; John Eric Z (NONUS); Stearns; Douglas R → Huang; Lili; Palacherla; Susmitha C |
| 55 | Run Developer Tests |  |  | 0d → 62d |  | resources Huang; Lili; Palacherla; Susmitha C; Tiongson; John Eric Z (NONUS) → Huang; Lili; Palacherla; Susmitha C |
| 56 | Integrate and Create Build |  |  | 62d → 34d |  | resources Miller; Jackie K; Ingram Michael T; Tiongson; John Eric Z (NONUS); Huang; Lili; Palacherla; Susmitha C → Huang; Lili; Palacherla; Susmitha C |
| 57 | Evaluate Code for Security |  |  |  |  | resources Huang; Lili; Palacherla; Susmitha C; Szabo; Brian P; Tiongson; John Eric Z (NONUS); Ingram Michael T → Huang; Lili; Palacherla; Susmitha C; Szabo; Brian P; Information System Security Officer |
| 58 | Evaluate Security Testing |  |  |  |  | resources Huang; Lili; Palacherla; Susmitha C; Szabo; Brian P; Ingram Michael T; Tiongson; John Eric Z (NONUS); Stearns; Douglas R → Huang; Lili; Palacherla; Susmitha C; Szabo; Brian P; Information System Security Officer |
| 59 | Verify Operations Security |  |  |  |  | resources Huang; Lili; Palacherla; Susmitha C; Szabo; Brian P; Ingram Michael T; Tiongson; John Eric Z (NONUS); Stearns; Douglas R → Huang; Lili; Palacherla; Susmitha C; Szabo; Brian P; Information System Security Officer |
| 61 | Implement Tests (optional) |  |  | 0d → 62d |  |  |
| 62 | Run Tests |  |  | 0d → 34d |  | resources Tester; Team Member → Stearns; Douglas R |
| 63 | Evaluate Security Testing |  |  | 0d → 62d |  | resources Project Manager; Stakeholder; Supplier Acquisition Manager; Tester; Huang; Lili; Palacherla; Susmitha C → Szabo; Brian P; Stearns; Douglas R |
| 64 | Peer Review Selected Work Products |  |  | 0d → 62d |  | resources Augustin; Jourdain M → Hinman; David L; Huang; Lili; Palacherla; Susmitha C; Stearns; Douglas R |
| 65 | Customer Acceptance Testing |  |  | 0d → 62d |  |  |
| 68 | Identify and Outline Requirements |  |  | 0d → 62d |  |  |
| 69 | Detail System-Wide Requirements |  |  | 0d → 62d |  |  |
| 71 | Create Test Cases |  |  | 0d → 62d |  | resources Stearns; Douglas R; Tiongson; John Eric Z (NONUS); Huang; Lili; Palacherla; Susmitha C → Stearns; Douglas R; Huang; Lili; Palacherla; Susmitha C |
| 74 | Design the Solution |  |  | 0d → 62d |  |  |
| 75 | Decision Analysis and Resolution |  |  | 62d → 34d |  |  |
| 77 | Create Developer Tests |  |  | 0d → 62d |  | resources Huang; Lili; Palacherla; Susmitha C; Tiongson; John Eric Z (NONUS); Stearns; Douglas R → Huang; Lili; Palacherla; Susmitha C |
| 78 | Develop Solution |  |  | 0d → 62d |  | resources Huang; Lili; Palacherla; Susmitha C; Tiongson; John Eric Z (NONUS); Stearns; Douglas R → Huang; Lili; Palacherla; Susmitha C |
| 79 | Run Developer Tests |  |  | 0d → 62d |  | resources Huang; Lili; Palacherla; Susmitha C; Tiongson; John Eric Z (NONUS) → Huang; Lili; Palacherla; Susmitha C |
| 80 | Integrate and Create Build |  |  | 62d → 34d |  | resources Miller; Jackie K; Ingram Michael T; Tiongson; John Eric Z (NONUS); Huang; Lili; Palacherla; Susmitha C → Huang; Lili; Palacherla; Susmitha C |
| 81 | Evaluate Code for Security |  |  |  |  | resources Huang; Lili; Palacherla; Susmitha C; Szabo; Brian P; Tiongson; John Eric Z (NONUS); Ingram Michael T → Huang; Lili; Palacherla; Susmitha C; Szabo; Brian P; Information System Security Officer |
| 82 | Evaluate Security Testing |  |  |  |  | resources Huang; Lili; Palacherla; Susmitha C; Szabo; Brian P; Ingram Michael T; Tiongson; John Eric Z (NONUS); Stearns; Douglas R → Huang; Lili; Palacherla; Susmitha C; Szabo; Brian P; Information System Security Officer |
| 83 | Verify Operations Security |  |  |  |  | resources Huang; Lili; Palacherla; Susmitha C; Szabo; Brian P; Ingram Michael T; Tiongson; John Eric Z (NONUS); Stearns; Douglas R → Huang; Lili; Palacherla; Susmitha C; Szabo; Brian P; Information System Security Officer |
| 85 | Run Tests |  |  | 0d → 34d |  | resources Tester; Team Member → Stearns; Douglas R |
| 86 | Evaluate Security Testing |  |  | 0d → 62d |  | resources Project Manager; Stakeholder; Supplier Acquisition Manager; Tester; Huang; Lili; Palacherla; Susmitha C → Szabo; Brian P; Stearns; Douglas R |
| 87 | Peer Review Selected Work Products |  |  | 0d → 62d |  | resources Augustin; Jourdain M → Hinman; David L; Huang; Lili; Palacherla; Susmitha C; Stearns; Douglas R |
| 88 | Customer Acceptance Testing |  |  | 0d → 62d |  |  |
| 96 | Identify and Outline Requirements |  |  | 0d → 65d |  |  |
| 97 | Detail System-Wide Requirements |  |  | 0d → 65d |  |  |
| 99 | Create Test Cases |  |  | 0d → 65d |  | resources Stearns; Douglas R; Tiongson; John Eric Z (NONUS); Huang; Lili; Palacherla; Susmitha C → Stearns; Douglas R; Huang; Lili; Palacherla; Susmitha C |
| 102 | Design the Solution |  |  | 0d → 65d |  |  |
| 103 | Decision Analysis and Resolution |  |  | 65d → 34d |  |  |
| 105 | Create Developer Tests |  |  | 0d → 65d |  | resources Huang; Lili; Palacherla; Susmitha C; Tiongson; John Eric Z (NONUS); Stearns; Douglas R → Huang; Lili; Palacherla; Susmitha C |
| 106 | Develop Solution |  |  | 0d → 65d |  | resources Huang; Lili; Palacherla; Susmitha C; Tiongson; John Eric Z (NONUS); Stearns; Douglas R → Huang; Lili; Palacherla; Susmitha C |
| 107 | Run Developer Tests |  |  | 0d → 65d |  | resources Huang; Lili; Palacherla; Susmitha C; Tiongson; John Eric Z (NONUS) → Huang; Lili; Palacherla; Susmitha C |
| 108 | Integrate and Create Build |  |  | 65d → 34d |  | resources Miller; Jackie K; Ingram Michael T; Tiongson; John Eric Z (NONUS); Huang; Lili; Palacherla; Susmitha C → Huang; Lili; Palacherla; Susmitha C |
| 109 | Evaluate Code for Security |  |  |  |  | resources Huang; Lili; Palacherla; Susmitha C; Szabo; Brian P; Tiongson; John Eric Z (NONUS); Ingram Michael T → Huang; Lili; Palacherla; Susmitha C; Szabo; Brian P; Information System Security Officer |
| 110 | Evaluate Security Testing |  |  |  |  | resources Huang; Lili; Palacherla; Susmitha C; Szabo; Brian P; Ingram Michael T; Tiongson; John Eric Z (NONUS); Stearns; Douglas R → Huang; Lili; Palacherla; Susmitha C; Szabo; Brian P; Information System Security Officer |
| 111 | Verify Operations Security |  |  |  |  | resources Huang; Lili; Palacherla; Susmitha C; Szabo; Brian P; Ingram Michael T; Tiongson; John Eric Z (NONUS); Stearns; Douglas R → Huang; Lili; Palacherla; Susmitha C; Szabo; Brian P; Information System Security Officer |
| 113 | Implement Tests (optional) |  |  | 0d → 65d |  |  |
| 114 | Run Tests |  |  | 0d → 34d |  | resources Tester; Team Member → Stearns; Douglas R |

| ID | Task | Finish | Duration | Total float | Other |
| --- | --- | --- | --- | --- | --- |
| 115 | Evaluate Security Testing |  | 0d → 65d |  | resources Project Manager; Stakeholder; Supplier Acquisition Manager; Tester; Huang; Lili; Palacherla; Susmitha C → Szabo; Brian P; Stearns; Douglas R |
| 116 | Peer Review Selected Work Products |  | 0d → 65d |  | resources Augustin; Jourdain M → Hinman; David L; Huang; Lili; Palacherla; Susmitha C; Stearns; Douglas R |
| 117 | Customer Acceptance Testing |  | 0d → 65d |  |  |
| 118 | **Assess Results** | 2017-06-02 → 2017-06-05 (+3d) | 256d? → 256.5d? | 6d → 1720.5d |  |
| 120 | Communicate to stakeholders | 2017-06-02 → 2017-06-05 (+3d) | 2d? → 2.5d? | 6d → 1720.5d | resources Haltmeyer; Jacqueline K; Ingram Michael T; Tiongson; John Eric Z (NONUS) → Ingram Michael T; Tiongson; John Eric Z (NONUS) |
